# CIMO 3 – Aplicación Móvil de Planificación de Viajes (Trujillo)

Schedule from GanttProject, 2025-10-22 to 2026-04-27.
Trufi Association e.V.
Plan maestro basado en la conversación con Leonardo Gutiérrez. Inicio 2025-10-27 · Cierre 2026-03-30. Incluye hitos: AAR, Formato Gestor, Validación MobilityData, Branding, Infra Municipal, Validación API-AN. / ACTUALIZADO 22-ene-2026: Fechas reales, cambios de alcance (GTFS desde cero, lanzamiento marzo, migración abril).

## Calendars

- Project calendar: Mon-Fri working; Sat-Sun off. Exceptions (off unless hours are given): 2025-12-31 to 2026-01-01.

## Resources

| Resource |
| --- |
| Trufi |
| TranConsult |
| Municipalidad |
| Gestor de flotas |
| GIZ |
| CIMO |

## Schedule

| ID | WBS | Task | Type | Duration | Start | Finish | Predecessors | Complete | Resources |
| --- | --- | --- | --- | --- | --- | --- | --- | --- | --- |
| 1 | 1 | **FASE 0 · Arranque y coordinación** |  | 1d | 2025-10-28 | 2025-10-28 |  |  |  |
| 2 | 1.1 | A001 Kick-off y canales (Slack/Drive/Docs) | milestone | 0d | 2025-10-28 | 2025-10-28 |  | 100% | Trufi [0%] |
| 3 | 1.2 | A002 Plan de trabajo y comunicación + cronograma validado | milestone | 0d | 2025-10-28 | 2025-10-28 | 2 | 100% | TranConsult [0%] |
| 4 | 2 | **FASE 1 · Preparación técnica** |  | 16d | 2025-10-22 | 2025-11-12 |  | 100% |  |
| 5 | 2.1 | A101 Definición API-AN (endpoints, métricas, seguridad) |  | 13d | 2025-10-27 | 2025-11-12 |  | 100% | Trufi [0%] |
| 6 | 2.2 | A102 Definición requisitos SITR (especificación preliminar hacia gestor) |  | 16d | 2025-10-22 | 2025-11-12 | 5FF | 100% | Trufi [0%] |
| 7 | 3 | **FASE 2 · Datos de transporte (GTFS)** |  | 80d | 2025-10-29 | 2026-02-19 |  | 88% |  |
| 8 | 3.1 | A201 Revisión de fuentes (KML/GeoJSON/Excel/GTFS existente) |  | 24d | 2025-10-29 | 2025-12-01 | 1 | 100% | Trufi [0%] |
| 9 | 3.2 | A202.1 Pruebas del desarrollador Gestor de flota | milestone | 0d | 2026-02-06 | 2026-02-06 |  |  |  |
| 10 | 3.3 | A203 Definición de codificación con la autoridad | milestone | 0d | 2025-10-29 | 2025-10-29 | 1 |  |  |
| 11 | 3.4 | A204 Elaboración AAR v1 y concertación | milestone | 0d | 2025-12-02 | 2025-12-02 |  | 100% | Trufi [0%] |
| 12 | 3.5 | A205 AAR validado y firmado [HITO] | milestone | 0d | 2025-12-02 | 2025-12-02 | 11 | 100% | Municipalidad [0%] |
| 13 | 3.6 | A206 Revision de paraderos de Transporte público |  | 25d | 2025-11-24 | 2025-12-26 | 14, 18FF | 100% |  |
| 14 | 3.7 | A206.1 Entrega paraderos centro | milestone | 0d | 2025-11-24 | 2025-11-24 |  |  |  |
| 15 | 3.8 | A206.2 Entrega paraderos periferia | milestone | 0d | 2025-12-26 | 2025-12-26 |  |  |  |
| 16 | 3.9 | A206.3 Segunda Revision paraderos |  | 15d | 2025-12-26 | 2026-01-19 | 15 | 100% |  |
| 17 | 3.10 | A207 Evaluación de necesidad de toma de campo | milestone | 0d | 2025-12-02 | 2025-12-02 | 12 | 100% |  |
| 18 | 3.11 | A209 Subida a Openstreetmap + revisión topológica |  | 15d | 2025-12-02 | 2025-12-22 | 11 | 100% | Trufi [0%] |
| 19 | 3.12 | **A210 Consolidación del feed GTFS (rutas, trips, shapes, calendars, fares)** |  | 17d | 2025-12-23 | 2026-01-16 |  |  | Trufi [0%] |
| 20 | 3.12.1 | A210.1 GTFS Version 1 | milestone | 0d | 2025-12-23 | 2025-12-23 | 18 | 100% | Trufi [0%] |
| 21 | 3.12.2 | A210.2 GTFS Version 2 | milestone | 0d | 2026-01-06 | 2026-01-06 |  | 100% | Trufi [0%] |
| 22 | 3.12.3 | A210.3 GTFS Version 3 | milestone | 0d | 2026-01-14 | 2026-01-14 |  | 100% | Trufi [0%] |
| 23 | 3.12.4 | A210.4 GTFS Version 4 | milestone | 0d | 2026-01-16 | 2026-01-16 |  | 100% | Trufi [0%] |
| 24 | 3.12.5 | A210.5 GTFS Version 5 | milestone | 0d | 2026-01-19 | 2026-01-19 |  | 100% | Trufi [0%] |
| 25 | 3.13 | A211 Compatibilidad GTFS–gestor (final) |  | 10d | 2026-02-06 | 2026-02-19 | 9 |  |  |

| ID | WBS | Task | Type | Duration | Start | Finish | Predecessors | Complete | Resources |
| --- | --- | --- | --- | --- | --- | --- | --- | --- | --- |
| 26 | 4 | **FASE 3 · Backend y servicios (API-AN + SITR)** |  | 84d | 2025-11-13 | 2026-03-12 |  | 58% |  |
| 27 | 4.1 | A302 Desarrollo API-AN (implementación backend) |  | 59d | 2025-11-13 | 2026-02-05 | 5 | 80% | Trufi [0%] |
| 28 | 4.2 | A303 Pruebas internas de API-AN |  | 5d | 2026-03-06 | 2026-03-12 | 29 |  |  |
| 29 | 4.3 | A304 Desarrollo SITR (adaptación al formato, integración con OTP) |  | 20d | 2026-02-06 | 2026-03-05 | 9 |  | Trufi [0%] |
| 30 | 4.4 | A305 Montaje en nube |  | 4d | 2025-12-30 | 2026-01-06 |  | 100% | Trufi [0%] |
| 31 | 5 | **FASE 4 · Aplicación (móvil/web)** |  | 52d | 2026-01-07 | 2026-03-19 |  |  |  |
| 32 | 5.1 | A401 Primera Version de pruebas aplicativo | milestone | 0d | 2026-01-07 | 2026-01-07 | 30 | 100% | Trufi [0%] |
| 33 | 5.2 | A402 Branding oficial recibido [HITO] | milestone | 0d | 2026-02-05 | 2026-02-05 |  |  | Municipalidad [0%] |
| 34 | 5.3 | A403 Integración Aplicativo con GTFS definitivo y Branding |  | 7d | 2026-02-05 | 2026-02-13 | 32, 33 |  | Trufi [0%] |
| 35 | 5.4 | A405 Builds internas para QA |  | 5d | 2026-03-13 | 2026-03-19 |  |  | Trufi [0%] |
| 36 | 6 | **FASE 5 · Pruebas y aseguramiento de calidad** |  | 12d | 2026-03-06 | 2026-03-23 |  |  |  |
| 37 | 6.1 | A501 Pruebas SITR con el gestor de flotas |  | 10d | 2026-03-06 | 2026-03-19 | 29 |  | Gestor de flotas [0%] |
| 38 | 6.2 | A503 Validación anticipada de la API-AN (Power BI) [HITO] |  | 7d | 2026-03-13 | 2026-03-23 | 28 |  | TranConsult [0%] |
| 39 | 7 | **FASE 6 · Puesta en producción** |  | 25d | 2026-03-24 | 2026-04-27 |  |  |  |
| 40 | 7.1 | A601 Infraestructura municipal operativa [HITO externo] | milestone | 0d | 2026-04-01 | 2026-04-01 |  |  | Municipalidad [0%] |
| 41 | 7.2 | A602 Migración a servidores municipales |  | 7d | 2026-04-01 | 2026-04-09 | 40 |  | Trufi [0%] |
| 42 | 7.3 | A603 Publicación en tiendas/web municipal |  | 7d | 2026-04-10 | 2026-04-20 | 41 |  | Trufi [0%] |
| 43 | 7.4 | A604 Go-Live y estabilización |  | 5d | 2026-04-21 | 2026-04-27 | 42 |  | Trufi [0%] |
| 44 | 7.5 | A605 integracion en tiendas stores de la municipalidad version en la nube |  | 5d | 2026-03-24 | 2026-03-30 | 36 |  |  |
| 45 | 7.6 | A606 Lanzamiento app con infraestructura en la nube (no local) | milestone | 0d | 2026-03-31 | 2026-03-31 | 44 |  |  |
| 46 | 8 | **FASE 7 · Transferencia y cierre técnico** |  | 18d | 2026-03-31 | 2026-04-23 |  |  |  |
| 47 | 8.1 | A701 Documentación final técnica y operativa |  | 6d | 2026-03-31 | 2026-04-07 | 45 |  | Trufi [0%] |
| 48 | 8.2 | A702 Sesión virtual de transferencia técnica | milestone | 0d | 2026-04-21 | 2026-04-21 | 41, 42, 47 |  | Trufi [0%] |
| 49 | 8.3 | A703 Entrega de código y migración de cuentas |  | 3d | 2026-04-21 | 2026-04-23 | 48 |  | Trufi [0%] |
