# CIMO 3 – Aplicación Móvil de Planificación de Viajes (Trujillo)

Schedule from GanttProject, 2025-10-27 to 2026-04-16.
Trufi Association e.V.
Plan maestro basado en la conversación con Leonardo Gutiérrez. Inicio 2025-10-27 · Cierre 2026-03-30. Incluye hitos: AAR, Formato Gestor, Validación MobilityData, Branding, Infra Municipal, Validación API-AN.

## Calendars

- Project calendar: Mon-Fri working; Sat-Sun off. Exceptions (off unless hours are given): 2025-12-21 to 2026-01-01.

## Resources

| Resource |
| --- |
| Trufi |
| TranConsult |
| Municipalidad |
| Gestor de flotas |
| GIZ |
| CIMO |

## Schedule

| ID | WBS | Task | Type | Duration | Start | Finish | Predecessors | Resources |
| --- | --- | --- | --- | --- | --- | --- | --- | --- |
| 1 | 1 | **FASE 0 · Arranque y coordinación** |  | 8d | 2025-10-27 | 2025-11-05 |  |  |
| 2 | 1.1 | A001 Kick-off y canales (Slack/Drive/Docs) |  | 3d | 2025-10-27 | 2025-10-29 |  | Trufi [0%] |
| 3 | 1.2 | A002 Plan de trabajo y comunicación + cronograma validado |  | 5d | 2025-10-30 | 2025-11-05 | 2 | TranConsult [0%] |
| 4 | 2 | **FASE 1 · Preparación técnica** |  | 12d | 2025-10-27 | 2025-11-11 |  |  |
| 5 | 2.1 | A101 Definición API-AN (endpoints, métricas, seguridad) |  | 12d | 2025-10-27 | 2025-11-11 |  | Trufi [0%] |
| 6 | 2.2 | A102 Definición requisitos SITR (especificación preliminar hacia gestor) |  | 10d | 2025-10-29 | 2025-11-11 | 5FF | Trufi [0%] |
| 7 | 3 | **FASE 2 · Datos de transporte (GTFS)** |  | 38d | 2025-11-06 | 2026-01-09 |  |  |
| 8 | 3.1 | A201 Revisión de fuentes (KML/GeoJSON/Excel/GTFS existente) |  | 10d | 2025-11-06 | 2025-11-19 | 1 | Trufi [0%] |
| 9 | 3.2 | A202 Compatibilidad GTFS–gestor (preliminar) |  | 10d | 2025-11-20 | 2025-12-03 | 8 |  |
| 10 | 3.3 | A203 Definición de codificación con la autoridad |  | 5d | 2025-11-06 | 2025-11-12 | 1 |  |
| 11 | 3.4 | A204 Elaboración AAR v1 y concertación |  | 17d | 2025-11-13 | 2025-12-05 | 10 | Trufi [0%] |
| 12 | 3.5 | A205 AAR validado y firmado [HITO] | milestone | 0d | 2025-12-08 | 2025-12-08 | 11 | Municipalidad [0%] |
| 13 | 3.6 | A206 Revision de paraderos de Transporte público |  | 15d | 2025-12-01 | 2025-12-19 | 16FF |  |
| 14 | 3.7 | A207 Evaluación de necesidad de toma de campo |  | 3d | 2025-12-08 | 2025-12-10 | 12 |  |
| 15 | 3.8 | A208 Toma de datos en campo (si aplica) |  | 5d | 2025-12-11 | 2025-12-17 | 14 | Municipalidad [0%] |
| 16 | 3.9 | A209 Subida a Openstreetmap + revisión topológica |  | 10d | 2025-12-08 | 2025-12-19 | 11, 15FF | Trufi [0%] |
| 17 | 3.10 | A210 Consolidación del feed GTFS (rutas, trips, shapes, calendars, fares) |  | 5d | 2026-01-02 | 2026-01-08 | 16 | Trufi [0%] |
| 18 | 3.11 | A211 Compatibilidad GTFS–gestor (final) | milestone | 0d | 2026-01-09 | 2026-01-09 | 9, 17 |  |
| 19 | 3.12 | A212 Validación con Validador Canónico MobilityData [HITO] |  | 1d | 2026-01-09 | 2026-01-09 | 18 | Trufi [0%] |
| 20 | 4 | **FASE 3 · Backend y servicios (API-AN + SITR)** |  | 34d | 2025-11-06 | 2026-01-05 |  |  |
| 21 | 4.1 | A301 Formato del gestor confirmado (SITR) [Gestor de Flota] | milestone | 0d | 2025-11-12 | 2025-11-12 | 6 | Gestor de flotas [0%] |
| 22 | 4.2 | A302 Desarrollo API-AN (implementación backend) |  | 20d | 2025-11-12 | 2025-12-09 | 5 | Trufi [0%] |
| 23 | 4.3 | A303 Pruebas internas de API-AN |  | 5d | 2025-12-10 | 2025-12-16 | 22 |  |
| 24 | 4.4 | A304 Desarrollo SITR (adaptación al formato, integración con OTP) |  | 30d | 2025-11-12 | 2026-01-05 | 21 | Trufi [0%] |
| 25 | 4.5 | A305 Montaje en nube (pruebas técnicas) |  | 2d | 2025-11-06 | 2025-11-07 | 1 | Trufi [0%] |
| 26 | 4.6 | A306 Preparación de migración a servidor municipal |  | 5d | 2025-11-10 | 2025-11-14 | 25 | Municipalidad [0%] |

| ID | WBS | Task | Type | Duration | Start | Finish | Predecessors | Resources |
| --- | --- | --- | --- | --- | --- | --- | --- | --- |
| 27 | 5 | **FASE 4 · Aplicación (móvil/web)** |  | 45d | 2025-12-02 | 2026-02-13 |  |  |
| 28 | 5.1 | A401 Construcción de aplicación con GTFS previos (pre-AAR) |  | 20d | 2025-12-02 | 2026-01-09 | 19FF, 25 | Trufi [0%] |
| 29 | 5.2 | A402 Branding oficial recibido [HITO] | milestone | 0d | 2026-01-12 | 2026-01-12 | 28 | Municipalidad [0%] |
| 30 | 5.3 | A403 Integración Aplicativo con GTFS definitivo y Branding |  | 5d | 2026-01-12 | 2026-01-16 | 19, 28, 29 | Trufi [0%] |
| 31 | 5.4 | A404 Integración tiempo real (SITR) en app (Condicional) |  | 20d | 2026-01-12 | 2026-02-06 | 19 | Trufi [0%] |
| 32 | 5.5 | A405 Builds internas para QA |  | 5d | 2026-02-09 | 2026-02-13 | 31 | Trufi [0%] |
| 33 | 6 | **FASE 5 · Pruebas y aseguramiento de calidad** |  | 45d | 2026-01-19 | 2026-03-20 |  |  |
| 34 | 6.1 | A501 Pruebas SITR con el gestor de flotas |  | 10d | 2026-02-09 | 2026-02-20 | 24, 31 | Gestor de flotas [0%] |
| 35 | 6.2 | A502 QA end-to-end y usabilidad |  | 10d | 2026-02-23 | 2026-03-06 | 32, 34 | Trufi [0%] |
| 36 | 6.3 | A503 Validación anticipada de la API-AN (Power BI) [HITO] | milestone | 0d | 2026-01-19 | 2026-01-19 | 23, 30 | TranConsult [0%] |
| 37 | 6.4 | A504 Piloto controlado (universidades + funcionarios) |  | 10d | 2026-03-09 | 2026-03-20 | 35 | Trufi [0%] |
| 38 | 7 | **FASE 6 · Puesta en producción** |  | 19d | 2026-03-23 | 2026-04-16 |  |  |
| 39 | 7.1 | A601 Infraestructura municipal operativa [HITO externo] | milestone | 0d | 2026-03-23 | 2026-03-23 | 37 | Municipalidad [0%] |
| 40 | 7.2 | A602 Migración a servidores municipales |  | 7d | 2026-03-23 | 2026-03-31 | 26, 39 | Trufi [0%] |
| 41 | 7.3 | A603 Publicación en tiendas/web municipal |  | 7d | 2026-04-01 | 2026-04-09 | 40 | Trufi [0%] |
| 42 | 7.4 | A604 Go-Live y estabilización |  | 5d | 2026-04-10 | 2026-04-16 | 41 | Trufi [0%] |
| 43 | 8 | **FASE 7 · Transferencia y cierre técnico** |  | 29d | 2026-03-09 | 2026-04-16 |  |  |
| 44 | 8.1 | A701 Documentación final técnica y operativa |  | 6d | 2026-03-09 | 2026-03-16 | 35 | Trufi [0%] |
| 45 | 8.2 | A702 Sesión virtual de transferencia técnica |  | 2d | 2026-04-10 | 2026-04-13 | 40, 41, 44 | Trufi [0%] |
| 46 | 8.3 | A703 Entrega de código y migración de cuentas |  | 3d | 2026-04-14 | 2026-04-16 | 45 | Trufi [0%] |
